# RoboTractor XMPP and REST Command and Control Server

Schedule from MS Project, 2014-02-10 to 2014-04-02, status date 2014-03-10, A marks actual dates.

## Calendars

- Standard: Mon-Fri 08:00-12:00, 13:00-17:00; Sat-Sun off.

## Resources

| Resource |
| --- |
| Jeremy Wright |
| Arun Balaji Buduru |
| David Lucero |

## Schedule

| ID | WBS | Task | Duration | Start | Finish | Predecessors | Complete | Remaining | Baseline start | Baseline finish | Baseline duration | Baseline 1 start | Baseline 1 finish | Total slack | Free slack | Deadline | Resources | Work | Actual work |
| --- | --- | --- | --- | --- | --- | --- | --- | --- | --- | --- | --- | --- | --- | --- | --- | --- | --- | --- | --- |
| 1 | 1 | **Administrativa** | 38d | 2014-02-10 A | 2014-04-02 |  | 23% | 29.36d | 2014-02-09 | 2014-03-31 | 36d | 2014-02-10 | 2014-04-02 | 0d |  |  |  | 88h | 20h |
| 2 | 1.1 | Interim Report | 1w | 2014-02-10 A | 2014-02-14 |  | 50% | 0.5w | 2014-02-10 | 2014-02-14 | 1w | 2014-02-10 | 2014-02-14 | 16d |  | 2014-03-10 | Jeremy Wright; Arun Balaji Buduru; David Lucero | 40h | 20h |
| 3 | 1.2 | Final Project Report | 1w | 2014-03-26 | 2014-04-01 | 38FF |  |  | 2014-03-24 | 2014-03-28 | 1w | 2014-03-26 | 2014-04-01 | 0d |  | 2014-04-07 | Jeremy Wright; Arun Balaji Buduru; David Lucero | 40h |  |
| 4 | 1.3 | Project Demo | 1d | 2014-04-01 | 2014-04-02 | 3 |  |  | 2014-03-28 | 2014-03-31 | 1d | 2014-04-01 | 2014-04-02 | 0d |  | 2014-04-21 | Jeremy Wright; Arun Balaji Buduru; David Lucero | 8h |  |
| 5 | 2 | **Implementation** | 33d | 2014-02-10 A | 2014-03-26 |  | 54% | 15.04d | 2014-02-10 | 2014-03-24 | 31d | 2014-02-10 | 2014-03-26 | 0d |  |  |  | 496h | 270h |
| 6 | 2.1 | **Development Environment** | 10d | 2014-02-10 A | 2014-02-21 |  | 57% | 4.25d | 2014-02-10 | 2014-02-21 | 10d | 2014-02-10 | 2014-02-21 | 0d |  |  |  | 80h | 46h |
| 7 | 2.1.1 | Fabic Deployment | 1d | 2014-02-14 A | 2014-02-14 |  | 50% | 0.5d | 2014-02-14 | 2014-02-14 | 1d | 2014-02-14 | 2014-02-14 | 3d | 2.5d |  | Jeremy Wright | 8h | 4h |
| 8 | 2.1.2 | Django Project | 0.5d | 2014-02-19 A | 2014-02-19 A |  | 100% |  | 2014-02-19 | 2014-02-19 | 0.5d | 2014-02-19 | 2014-02-19 |  |  |  | Jeremy Wright | 4h | 4h |
| 9 | 2.1.3 | ejabberd Configuration | 2d | 2014-02-10 | 2014-02-11 |  |  |  | 2014-02-10 | 2014-02-11 | 2d | 2014-02-10 | 2014-02-11 | 6d | 5.5d |  | Jeremy Wright | 16h |  |
| 10 | 2.1.4 | Web Server Configuration | 2d | 2014-02-12 A | 2014-02-13 A |  | 100% |  | 2014-02-12 | 2014-02-13 | 2d | 2014-02-12 | 2014-02-13 |  |  |  | Jeremy Wright | 16h | 16h |
| 11 | 2.1.5 | TastyPie Plugin Configuration | 1d | 2014-02-17 A | 2014-02-17 A |  | 100% |  | 2014-02-17 | 2014-02-17 | 1d | 2014-02-17 | 2014-02-17 |  |  |  | Jeremy Wright | 8h | 8h |
| 12 | 2.1.6 | Python Virtual Environments | 1d | 2014-02-18 A | 2014-02-18 A |  | 100% |  | 2014-02-18 | 2014-02-18 | 1d | 2014-02-18 | 2014-02-18 |  |  |  | Jeremy Wright | 8h | 8h |
| 13 | 2.1.7 | Testing | 2d | 2014-02-19 A | 2014-02-21 | 7, 8, 9, 10, 11, 12 | 25% | 1.5d | 2014-02-19 | 2014-02-21 | 2d | 2014-02-19 | 2014-02-21 | 0.25d | 0d |  | Jeremy Wright | 16h | 4h |
| 14 | 2.1.8 | Development Documentation | 0.5d | 2014-02-21 A | 2014-02-21 | 13 | 50% | 0.25d | 2014-02-21 | 2014-02-21 | 0.5d | 2014-02-21 | 2014-02-21 | 0d |  |  | Jeremy Wright | 4h | 2h |
| 15 | 2.2 | **XMPP Implementation** | 23d | 2014-02-24 A | 2014-03-26 | 6 | 50% | 11.5d | 2014-02-24 | 2014-03-20 | 19d | 2014-02-24 | 2014-03-26 | 0d |  |  |  | 152h | 76h |
| 16 | 2.2.1 | Client Login/Auth | 1d | 2014-03-14 | 2014-03-14 | 9 |  |  | 2014-03-14 | 2014-03-14 | 1d | 2014-03-14 | 2014-03-14 | 2d |  |  | David Lucero | 8h |  |
| 17 | 2.2.2 | **Tractor Demo Software** | 10d | 2014-02-24 A | 2014-03-07 |  | 70% | 3d | 2014-02-24 | 2014-03-07 | 10d | 2014-02-24 | 2014-03-07 | 6d | 5d |  |  | 80h | 56h |
| 18 | 2.2.2.1 | Command Language Grammar | 3d | 2014-02-24 A | 2014-02-26 A |  | 100% |  | 2014-02-24 | 2014-02-26 | 3d | 2014-02-24 | 2014-02-26 |  |  |  | David Lucero | 24h | 24h |
| 19 | 2.2.2.2 | State Machine Design | 3d | 2014-02-27 A | 2014-03-03 A |  | 100% |  | 2014-02-27 | 2014-03-03 | 3d | 2014-02-27 | 2014-03-03 |  |  |  | David Lucero | 24h | 24h |
| 20 | 2.2.2.3 | XMPP Client | 2d | 2014-03-04 | 2014-03-05 |  |  |  | 2014-03-04 | 2014-03-05 | 2d | 2014-03-04 | 2014-03-05 | 6d | 0d |  | David Lucero | 16h |  |
| 21 | 2.2.2.4 | Testing | 2d | 2014-03-06 A | 2014-03-07 | 18, 19, 20 | 50% | 1d | 2014-03-06 | 2014-03-07 | 2d | 2014-03-06 | 2014-03-07 | 6d |  |  | David Lucero | 16h | 8h |
| 22 | 2.2.3 | Debug Channel for Demo and Debug | 2d | 2014-03-17 A | 2014-03-18 | 17 | 50% | 1d | 2014-03-17 | 2014-03-18 | 2d | 2014-03-17 | 2014-03-18 | 1.5d | 0d |  | Jeremy Wright | 16h | 8h |
| 23 | 2.2.4 | Testing | 6d | 2014-03-19 A | 2014-03-26 | 22, 16, 17 | 25% | 4.5d | 2014-03-19 | 2014-03-26 | 6d | 2014-03-19 | 2014-03-26 | 0d |  |  | Arun Balaji Buduru | 48h | 12h |
| 24 | 2.3 | **Frontend UI** | 31d | 2014-02-10 A | 2014-03-24 |  | 71% | 8.86d | 2014-02-10 | 2014-03-24 | 31d | 2014-02-10 | 2014-03-24 | 2d |  |  |  | 112h | 80h |
| 25 | 2.3.1 | Google Maps Rendering of Tractor Positions | 1w | 2014-02-10 A | 2014-02-14 A |  | 100% |  | 2014-02-10 | 2014-02-14 | 1w | 2014-02-10 | 2014-02-14 |  |  |  | Arun Balaji Buduru | 40h | 40h |
| 26 | 2.3.2 | Connect UI to REST Interface | 2d | 2014-03-10 A | 2014-03-11 |  | 75% | 0.5d | 2014-03-10 | 2014-03-11 | 2d | 2014-03-10 | 2014-03-11 | 3d | 0d |  | Arun Balaji Buduru | 16h | 12h |
| 27 | 2.3.3 | Mechanism to input a path to send to the Tractor | 1w | 2014-02-24 A | 2014-02-28 |  | 50% | 0.5w | 2014-02-24 | 2014-02-28 | 1w | 2014-02-24 | 2014-02-28 | 10d | 7d |  | Arun Balaji Buduru | 40h | 20h |
| 28 | 2.3.4 | Testing | 2d | 2014-03-21 A | 2014-03-24 | 25, 26, 27 | 50% | 1d | 2014-03-21 | 2014-03-24 | 2d | 2014-03-21 | 2014-03-24 | 2d |  |  | Arun Balaji Buduru | 16h | 8h |

Notes:
- 17: Demo Software is the virtual tractor who will act on the commands sent via Jabber. / This software is "dumb" and will blindly follow the commands. If time permits we will investigate adding random "mistakes" to make the service more realistic.
- 22: Provide some mechanism to show that the tractor is receiving the commands and acting on them. This could be as simple as printing the commands to a log and long with the state of the tractor's state machine.

| ID | WBS | Task | Duration | Start | Finish | Predecessors | Complete | Remaining | Baseline start | Baseline finish | Baseline duration | Baseline 1 start | Baseline 1 finish | Total slack | Free slack | Resources | Work | Actual work |
| --- | --- | --- | --- | --- | --- | --- | --- | --- | --- | --- | --- | --- | --- | --- | --- | --- | --- | --- |
| 29 | 2.4 | **Server Backend** | 6d | 2014-03-12 A | 2014-03-19 | 6 | 25% | 4.5d | 2014-03-12 | 2014-03-19 | 6d | 2014-03-12 | 2014-03-19 | 5d |  |  | 48h | 12h |
| 30 | 2.4.1 | XMPP to Django (Punjab) connection | 3d | 2014-03-12 | 2014-03-14 |  |  |  | 2014-03-12 | 2014-03-14 | 3d | 2014-03-12 | 2014-03-14 | 6d | 1d | Arun Balaji Buduru | 24h |  |
| 31 | 2.4.2 | System Models | 1d | 2014-03-17 A | 2014-03-17 A |  | 100% |  | 2014-03-17 | 2014-03-17 | 1d | 2014-03-17 | 2014-03-17 |  |  | Arun Balaji Buduru | 8h | 8h |
| 32 | 2.4.3 | Testing | 2d | 2014-03-18 A | 2014-03-19 | 30, 31 | 25% | 1.5d | 2014-03-18 | 2014-03-19 | 2d | 2014-03-18 | 2014-03-19 | 5d |  | Arun Balaji Buduru | 16h | 4h |
| 33 | 2.5 | **REST Interface** | 20d | 2014-02-24 A | 2014-03-21 | 6 | 54% | 9.23d | 2014-02-21 | 2014-03-21 | 20d | 2014-02-24 | 2014-03-21 | 3d |  |  | 104h | 56h |
| 34 | 2.5.1 | API Design | 3d | 2014-02-24 A | 2014-02-26 |  | 99% | 0d | 2014-02-24 | 2014-02-26 | 3d | 2014-02-24 | 2014-02-26 | 20d |  | David Lucero; Jeremy Wright | 24h | 24h |
| 35 | 2.5.2 | Authentication Model | 3d | 2014-03-14 A | 2014-03-18 |  | 99% | 0d | 2014-03-14 | 2014-03-18 | 3d | 2014-03-14 | 2014-03-18 | 6d |  | David Lucero; Jeremy Wright | 24h | 24h |
| 36 | 2.5.3 | Connection to Punjab Models | 3d | 2014-03-19 | 2014-03-21 |  |  |  | 2014-03-19 | 2014-03-21 | 3d | 2014-03-19 | 2014-03-21 | 3d |  | David Lucero; Jeremy Wright | 24h |  |
| 37 | 2.5.4 | Testing | 4d | 2014-02-27 A | 2014-03-11 |  | 25% | 3d | 2014-02-27 | 2014-03-11 | 4d | 2014-02-27 | 2014-03-11 | 11d |  | David Lucero; Jeremy Wright | 32h | 8h |
| 38 | 3 | System Testing | 1w | 2014-03-26 | 2014-04-01 | 5FF |  |  | 2014-03-24 | 2014-03-28 | 1w | 2014-03-26 | 2014-04-01 | 0d |  | Arun Balaji Buduru; David Lucero; Jeremy Wright | 112h |  |
